# DiscoverTenerife

Schedule from ProjectLibre, 2022-09-05 to 2023-03-23.

## Calendars

- Estandar: Mon-Fri 08:00-12:00, 13:00-17:00; Sat-Sun off.

## Resources

| Resource | Rate |
| --- | --- |
| No Asignado |  |
| Programadores |  |
| Programador python | 30 |
| Programador Unity C# | 33.33 |
| Programador Backend | 38.51 |
| Programador web | 32.93 |
| Diseñador Gráfico | 20 |
| Diseñador Base de Datos | 33.37 |
| Jefe proyecto | 45 |
| Betatester | 30 |
| Analista Marketing | 21 |
| Arquitecto de Software | 35 |
| Diseñador de reglas de videojuegos | 35 |
| Teclado Diseñador | 11 |
| Teclado Desarrollador | 11 |
| Teclado Desarrollador | 11 |
| Ratón Diseñador | 18 |
| Ratón Desarrollador | 18 |
| Ratón Desarrollador | 18 |
| Ordenador portatil JefeProjecto | 591 |
| Ordenador Sobremesa Desarrollador | 860 |
| Ordenador Sobremesa Desarrollador | 860 |
| Ordenador Sobremesa Diseñador | 860 |
| Pantalla Desarrollador | 195 |
| Pantalla Desarrollador | 195 |
| Pantalla Diseñador | 195 |
| Móvil Android | 215 |
| Móvil iOS | 206 |

## Schedule

| ID | WBS | Task | Duration | Start | Finish | Predecessors | Resources |
| --- | --- | --- | --- | --- | --- | --- | --- |
| 2 | 1 | Control del proyecto | 143d | 2022-09-05 | 2023-03-22 |  | Jefe proyecto [10%] |
| 4 | 2 | **Análisis** | 45d | 2022-09-05 | 2022-11-04 |  |  |
| 5 | 2.1 | **Estudio de mercado** | 22d | 2022-09-05 | 2022-10-04 |  |  |
| 6 | 2.1.1 | Análisis PEST | 5d | 2022-09-05 | 2022-09-09 |  | Analista Marketing |
| 7 | 2.1.2 | Análisis DAFO | 5d | 2022-09-12 | 2022-09-16 | 6 | Analista Marketing |
| 8 | 2.1.3 | Identificación de competencia | 5d | 2022-09-19 | 2022-09-23 | 7 | Analista Marketing |
| 9 | 2.1.4 | Estudio de perfiles de usuario | 7d | 2022-09-26 | 2022-10-04 | 8 | Analista Marketing |
| 10 | 2.2 | Diagrama de casos de uso uml | 15d | 2022-09-26 | 2022-10-14 | 8 | Arquitecto de Software |
| 11 | 2.3 | Creacion de documento analisis de requerimientos | 15d | 2022-10-17 | 2022-11-04 | 10 | Arquitecto de Software |
| 13 | 3 | **Diseño** | 8d | 2022-11-07 | 2022-11-16 | 4 |  |
| 14 | 3.1 | **Diseño Base De Datos** | 8d | 2022-11-07 | 2022-11-16 |  |  |
| 15 | 3.1.1 | Diseño Base De Datos Lugares | 4d | 2022-11-07 | 2022-11-10 |  | Diseñador Base de Datos |
| 16 | 3.1.2 | Diseño Base De Datos Usuarios | 4d | 2022-11-11 | 2022-11-16 | 15 | Diseñador Base de Datos |
| 19 | 3.2 | Diseño reglas puntuación | 5d | 2022-11-07 | 2022-11-11 |  | Diseñador de reglas de videojuegos |
| 21 | 4 | Adquisición hardware y sotfware | 1d | 2022-11-17 | 2022-11-17 | 13 | Teclado Desarrollador; Ratón Desarrollador; Ordenador Sobremesa Diseñador; Pantalla Diseñador; Móvil iOS; Ordenador portatil JefeProjecto; Ordenador Sobremesa Desarrollador; Pantalla Desarrollador; Móvil Android; Jefe proyecto; Teclado Diseñador; Ratón Diseñador |
| 23 | 5 | **Desarrollo** | 65d | 2022-11-18 | 2023-02-16 | 21 |  |
| 24 | 5.1 | Implementación BBDD en firebase | 15d | 2022-11-18 | 2022-12-08 |  | Programador Backend |
| 26 | 5.2 | **Extracción de información de la web** | 17d | 2022-11-18 | 2022-12-12 |  |  |
| 27 | 5.2.1 | Creación Webscrapper | 7d | 2022-11-18 | 2022-11-28 |  | Programador python |
| 28 | 5.2.2 | Adquisición de información de puntos de interés | 2d | 2022-11-29 | 2022-11-30 | 27 | Programador python |
| 29 | 5.2.3 | Limpieza de datos adquiridos | 3d | 2022-12-01 | 2022-12-05 | 28 | Programador python |
| 30 | 5.2.4 | División de lugares de interés en zonas de la app | 1d | 2022-12-06 | 2022-12-06 | 29 | Programador python |
| 31 | 5.2.5 | Subida de información (lugares) a la base de datos | 2d | 2022-12-09 | 2022-12-12 | 24, 30 | Programador Backend |
| 33 | 5.3 | **Diseño de interfaces** | 30d | 2022-11-18 | 2022-12-29 |  |  |
| 34 | 5.3.1 | Diseño APP android | 15d | 2022-11-18 | 2022-12-08 |  | Diseñador Gráfico |
| 35 | 5.3.2 | Diseño Web ranking | 15d | 2022-12-09 | 2022-12-29 | 34 | Diseñador Gráfico |

| ID | WBS | Task | Duration | Start | Finish | Predecessors | Resources |
| --- | --- | --- | --- | --- | --- | --- | --- |
| 37 | 5.4 | **Creación Página Web** | 35d | 2022-12-30 | 2023-02-16 |  |  |
| 38 | 5.4.1 | Creación Página Web (frontend) | 15d | 2022-12-30 | 2023-01-19 | 35 | Programador web |
| 39 | 5.4.2 | Creación Página Web (backend) | 20d | 2023-01-20 | 2023-02-16 | 31, 38 | Programador Backend |
| 41 | 5.5 | **Creación APP** | 50d | 2022-12-09 | 2023-02-16 |  |  |
| 42 | 5.5.1 | Programación parte offline de la APP | 20d | 2022-12-09 | 2023-01-05 | 34 | Programador Unity C# |
| 43 | 5.5.2 | Conexión APP backend (usuarios) | 5d | 2023-01-06 | 2023-01-12 | 24, 42 | Programador Unity C#; Programador Backend |
| 44 | 5.5.3 | Conexión APP backend (lugares) | 5d | 2023-01-13 | 2023-01-19 | 24, 43 | Programador Unity C#; Programador Backend |
| 45 | 5.5.4 | Programación parte online APP | 20d | 2023-01-20 | 2023-02-16 | 44 | Programador Unity C# |
| 47 | 6 | **Despliegue** | 45d | 2023-01-20 | 2023-03-23 |  |  |
| 48 | 6.1 | **Fase De pruebas** | 30d | 2023-01-20 | 2023-03-02 |  |  |
| 49 | 6.1.1 | Pruebas al servidor | 5d | 2023-01-20 | 2023-01-26 | 44 | Programador Backend; Betatester |
| 50 | 6.1.2 | Pruebas a la página web | 5d | 2023-02-17 | 2023-02-23 | 39 | Programador web; Betatester |
| 51 | 6.1.3 | Pruebas a la APP android | 5d | 2023-02-17 | 2023-02-23 | 41 | Programador Unity C#; Betatester; Móvil Android |
| 52 | 6.1.4 | Pruebas a la APP iOS | 5d | 2023-02-24 | 2023-03-02 | 51 | Programador Unity C#; Betatester; Móvil iOS |
| 54 | 6.2 | **Producción** | 15d | 2023-03-03 | 2023-03-23 | 48 |  |
| 55 | 6.2.1 | Campaña marketing | 15d | 2023-03-03 | 2023-03-23 |  |  |
| 56 | 6.2.2 | Migración a producción | 7d | 2023-03-03 | 2023-03-13 |  | Programador Backend; Programador web; Programador Unity C# |
